# Hospital construction building

Schedule from Primavera P6, 2025-01-02 to 2026-09-25, data date 2025-01-01, costs in USD.

## Calendars

- Trades - 5 Day Workweek: Mon-Fri 08:00-12:00, 13:00-17:00; Sat-Sun off. Exceptions (off unless hours are given): 2025-01-20, 2025-02-17, 2025-05-26, 2025-06-19, 2025-07-04, 2025-09-01, 2025-10-13, 2025-11-11, 2025-11-27, 2025-12-25, 2026-01-01, 2026-01-19, 2026-02-16, 2026-05-25, 2026-06-19, 2026-07-03, 2026-09-07.

## Resources

| Resource | Group | Unit | Rate |
| --- | --- | --- | --- |
| Project Manager | labor |  | 150 |
| Project Admin/Support | labor |  | 112.5 |
| Architect Team | labor |  | 437.5 |
| Structural Engineer Team | labor |  | 375 |
| Excavation Equipment | equipment |  | 225 |
| Structural Construction Crew | labor |  | 1000 |
| Concrete Pumping Equipment | equipment |  | 187.5 |
| Structural Materials (concrete, rebar, steel) | material | LS | 95000000 |
| MEP Installation Crew | labor |  | 812.5 |
| Tower Crane | equipment |  | 312.5 |
| Finishing Crew | labor |  | 562.5 |
| MEP Materials & Fixtures | material | LS | 60000000 |
| Smart-Systems Integration Team | labor |  | 625 |
| Smart-Systems Hardware (sensors, servers, network gear) | material | LS | 22500000 |
| Medical Equipment | material | LS | 33750000 |
| Furniture & Fixtures | material | LS | 5000000 |
| QA/QC Inspectors | labor |  | 225 |

## Schedule

| ID | WBS | Activity | Type | Duration | Start | Finish | Predecessors | Total float | Free float | Resources | Cost |
| --- | --- | --- | --- | --- | --- | --- | --- | --- | --- | --- | --- |
|  | 1 | **Project Management** |  |  | 2025-01-02 | 2026-09-25 |  |  |  |  |  |
|  | 1 | **Planning & Scheduling** |  |  | 2025-01-02 | 2026-09-25 |  |  |  |  |  |
| A1000 |  | Develop schedule baseline |  | 5d | 2025-01-02 | 2025-01-08 |  | 0d |  | Project Manager [40 h] | 6,000 |
| A1010 |  | Ongoing schedule updates | level of effort | 435d | 2025-01-02 | 2026-09-25 | A1000 SS | 0d |  | Project Manager [3480 h] | 522,000 |
|  | 2 | **Cost Control & Reporting** |  |  | 2025-01-02 | 2026-09-25 |  |  |  |  |  |
| A1020 |  | Develop cost baseline |  | 5d | 2025-01-02 | 2025-01-08 | A1000 SS | 430d |  | Project Manager [40 h] | 6,000 |
| A1030 |  | Ongoing cost control & reporting | level of effort | 430d | 2025-01-09 | 2026-09-25 | A1020 | 0d |  | Project Manager [3440 h] | 516,000 |
|  | 3 | **Risk Management** |  |  | 2025-01-02 | 2026-09-25 |  |  |  |  |  |
| A1040 |  | Develop risk register |  | 3d | 2025-01-02 | 2025-01-06 | A1000 SS | 432d |  | Project Manager [24 h] | 3,600 |
| A1050 |  | Ongoing risk monitoring | level of effort | 432d | 2025-01-07 | 2026-09-25 | A1040 | 0d |  | Project Manager [3456 h] | 518,400 |
|  | 4 | **Contract Administration** |  |  | 2025-01-02 | 2025-01-23 |  |  |  |  |  |
| A1060 |  | Draft contract templates |  | 5d | 2025-01-02 | 2025-01-08 | A1000 SS | 105d | 0d | Project Admin/Support [40 h] | 4,500 |
| A1070 |  | Contract negotiation & award |  | 10d | 2025-01-09 | 2025-01-23 | A1060 | 105d |  | Project Manager [80 h]; Project Admin/Support [80 h] | 21,000 |
|  | 2 | **Design** |  |  | 2025-01-09 | 2025-05-16 |  |  |  |  |  |
|  | 1 | **Architectural Design** |  |  | 2025-01-09 | 2025-04-25 |  |  |  |  |  |
|  | 1 | **Conceptual Design** |  |  | 2025-01-09 | 2025-02-06 |  |  |  |  |  |
| A1080 |  | Conceptual design |  | 20d | 2025-01-09 | 2025-02-06 | A1000 | 0d |  | Architect Team [160 h] | 70,000 |
|  | 2 | **Schematic Design** |  |  | 2025-02-07 | 2025-03-14 |  |  |  |  |  |
| A1090 |  | Schematic design |  | 25d | 2025-02-07 | 2025-03-14 | A1080 | 0d |  | Architect Team [200 h] | 87,500 |
|  | 3 | **Detailed Design** |  |  | 2025-03-17 | 2025-04-25 |  |  |  |  |  |
| A1100 |  | Detailed design |  | 30d | 2025-03-17 | 2025-04-25 | A1090 | 0d |  | Architect Team [240 h] | 105,000 |
|  | 2 | **Structural Design** |  |  | 2025-03-17 | 2025-04-18 |  |  |  |  |  |
| A1110 |  | Structural design |  | 25d | 2025-03-17 | 2025-04-18 | A1090 | 85d |  | Structural Engineer Team [200 h] | 75,000 |
|  | 3 | **MEP Design** |  |  | 2025-03-17 | 2025-04-18 |  |  |  |  |  |
| A1120 |  | MEP design |  | 25d | 2025-03-17 | 2025-04-18 | A1090 | 175d |  | Structural Engineer Team [200 h] | 75,000 |

| ID | WBS | Activity | Duration | Start | Finish | Predecessors | Total float | Free float | Resources | Cost |
| --- | --- | --- | --- | --- | --- | --- | --- | --- | --- | --- |
|  | 4 | **Medical Equipment Planning** |  | 2025-04-28 | 2025-05-16 |  |  |  |  |  |
| A1130 |  | Medical equipment planning | 15d | 2025-04-28 | 2025-05-16 | A1100 | 270d | 250d | Structural Engineer Team [120 h] | 45,000 |
|  | 3 | **Permits & Regulatory Approval** |  | 2025-02-07 | 2025-06-24 |  |  |  |  |  |
|  | 1 | **Certificate of Need** |  | 2025-02-07 | 2025-04-04 |  |  |  |  |  |
| A1140 |  | Prepare Certificate of Need application | 10d | 2025-02-07 | 2025-02-21 | A1080 | 335d | 0d | Project Admin/Support [80 h] | 9,000 |
| A1150 |  | Certificate of Need approval (wait) | 30d | 2025-02-24 | 2025-04-04 | A1140 | 335d | 0d | Project Admin/Support [240 h] | 27,000 |
|  | 2 | **Building Permits** |  | 2025-04-28 | 2025-06-24 |  |  |  |  |  |
| A1160 |  | Submit building permit application | 10d | 2025-04-28 | 2025-05-09 | A1100 | 0d |  | Project Admin/Support [80 h] | 9,000 |
| A1170 |  | Building permit approval (wait) | 30d | 2025-05-12 | 2025-06-24 | A1160 | 0d |  | Project Admin/Support [240 h] | 27,000 |
|  | 3 | **Healthcare Facility Licensing** |  | 2025-04-07 | 2025-04-25 |  |  |  |  |  |
| A1180 |  | Healthcare facility licensing application | 15d | 2025-04-07 | 2025-04-25 | A1150 | 335d | 325d | Project Admin/Support [120 h] | 13,500 |
|  | 4 | **Site Preparation & Civil Works** |  | 2025-06-25 | 2025-08-20 |  |  |  |  |  |
|  | 1 | **Site Clearing & Grading** |  | 2025-06-25 | 2025-07-16 |  |  |  |  |  |
| A1190 |  | Site clearing & grading | 15d | 2025-06-25 | 2025-07-16 | A1170, A1070 | 0d |  | Excavation Equipment [120 h]; Structural Construction Crew [120 h] | 147,000 |
|  | 2 | **Foundation Work** |  | 2025-07-17 | 2025-08-20 |  |  |  |  |  |
| A1200 |  | Foundation excavation | 10d | 2025-07-17 | 2025-07-30 | A1190 | 0d |  | Excavation Equipment [80 h] | 18,000 |
| A1210 |  | Foundation concrete pour | 15d | 2025-07-31 | 2025-08-20 | A1200 | 0d |  | Concrete Pumping Equipment [120 h]; Structural Construction Crew [120 h]; Structural Materials (concrete, rebar, steel) [0.06 LS] | 5,956,500 |
|  | 3 | **Utilities Infrastructure (water, power, sewage)** |  | 2025-07-24 | 2025-08-20 |  |  |  |  |  |
| A1220 |  | Utilities infrastructure installation | 20d | 2025-07-24 | 2025-08-20 | A1200 SS+5d | 90d |  | MEP Installation Crew [160 h] | 130,000 |
|  | 5 | **Structural Construction** |  | 2025-08-21 | 2025-12-31 |  |  |  |  |  |
|  | 1 | **Superstructure (per wing: ED, ICU, Surgical, Inpatient floors)** |  | 2025-08-21 | 2025-11-17 |  |  |  |  |  |
| A1230 |  | Superstructure – ED wing | 40d | 2025-08-21 | 2025-10-17 | A1210, A1110 | 20d |  | Tower Crane [320 h]; Structural Construction Crew [320 h]; Structural Materials (concrete, rebar, steel) [0.16 LS] | 15,933,500 |
| A1240 |  | Superstructure – ICU wing | 40d | 2025-08-21 | 2025-10-17 | A1210, A1110 | 20d |  | Tower Crane [320 h]; Structural Construction Crew [320 h]; Structural Materials (concrete, rebar, steel) [0.16 LS] | 15,933,500 |
| A1250 |  | Superstructure – Surgical wing | 40d | 2025-08-21 | 2025-10-17 | A1210, A1110 | 20d |  | Tower Crane [320 h]; Structural Construction Crew [320 h]; Structural Materials (concrete, rebar, steel) [0.16 LS] | 15,933,500 |
| A1260 |  | Superstructure – Inpatient floors | 60d | 2025-08-21 | 2025-11-17 | A1210, A1110 | 0d |  | Tower Crane [480 h]; Structural Construction Crew [480 h]; Structural Materials (concrete, rebar, steel) [0.24 LS] | 23,895,500 |

| ID | WBS | Activity | Duration | Start | Finish | Predecessors | Total float | Free float | Resources | Cost |
| --- | --- | --- | --- | --- | --- | --- | --- | --- | --- | --- |
|  | 2 | **Building Envelope (facade, roofing)** |  | 2025-11-18 | 2025-12-31 |  |  |  |  |  |
| A1270 |  | Building envelope – facade | 30d | 2025-11-18 | 2025-12-31 | A1260, A1230, A1240, A1250 | 0d |  | Finishing Crew [240 h]; Structural Materials (concrete, rebar, steel) [0.12 LS] | 11,763,000 |
| A1280 |  | Building envelope – roofing | 20d | 2025-11-18 | 2025-12-16 | A1260, A1230, A1240, A1250 | 75d | 55d | Finishing Crew [160 h]; Structural Materials (concrete, rebar, steel) [0.08 LS] | 7,842,000 |
|  | 6 | **MEP Installation** |  | 2026-01-02 | 2026-03-09 |  |  |  |  |  |
|  | 1 | **HVAC Systems** |  | 2026-01-02 | 2026-03-09 |  |  |  |  |  |
| A1290 |  | HVAC installation | 45d | 2026-01-02 | 2026-03-09 | A1270, A1120, A1220 | 20d | 0d | MEP Installation Crew [360 h]; MEP Materials & Fixtures [0.28 LS] | 17,170,500 |
|  | 2 | **Electrical Systems** |  | 2026-01-02 | 2026-03-09 |  |  |  |  |  |
| A1300 |  | Electrical installation | 45d | 2026-01-02 | 2026-03-09 | A1270, A1120, A1220 | 0d |  | MEP Installation Crew [360 h]; MEP Materials & Fixtures [0.28 LS] | 17,170,500 |
|  | 3 | **Plumbing & Medical Gas Systems** |  | 2026-01-02 | 2026-03-02 |  |  |  |  |  |
| A1310 |  | Plumbing & medical gas systems | 40d | 2026-01-02 | 2026-03-02 | A1270, A1120 | 25d | 5d | MEP Installation Crew [320 h]; MEP Materials & Fixtures [0.25 LS] | 15,260,000 |
|  | 4 | **Fire Protection Systems** |  | 2026-01-02 | 2026-02-13 |  |  |  |  |  |
| A1320 |  | Fire protection systems | 30d | 2026-01-02 | 2026-02-13 | A1270, A1120 | 35d | 15d | MEP Installation Crew [240 h]; MEP Materials & Fixtures [0.19 LS] | 11,445,000 |
|  | 7 | **Smart-Systems Integration** |  | 2026-03-10 | 2026-07-23 |  |  |  |  |  |
|  | 1 | **IoT Patient Monitoring Infrastructure** |  | 2026-04-14 | 2026-05-26 |  |  |  |  |  |
| A1330 |  | IoT patient monitoring installation | 30d | 2026-04-14 | 2026-05-26 | A1360 | 0d |  | Smart-Systems Integration Team [240 h]; Smart-Systems Hardware (sensors, servers, network gear) [0.24 LS] | 5,550,000 |
|  | 2 | **Building Management System (BMS)** |  | 2026-04-14 | 2026-05-26 |  |  |  |  |  |
| A1340 |  | BMS installation | 30d | 2026-04-14 | 2026-05-26 | A1360 | 40d |  | Smart-Systems Integration Team [240 h]; Smart-Systems Hardware (sensors, servers, network gear) [0.24 LS] | 5,550,000 |
|  | 3 | **EMR System Integration** |  | 2026-05-27 | 2026-07-23 |  |  |  |  |  |
| A1350 |  | EMR system integration | 40d | 2026-05-27 | 2026-07-23 | A1330, A1360 | 0d |  | Smart-Systems Integration Team [320 h]; Smart-Systems Hardware (sensors, servers, network gear) [0.32 LS] | 7,400,000 |
|  | 4 | **Network & Cybersecurity Infrastructure** |  | 2026-03-10 | 2026-04-13 |  |  |  |  |  |
| A1360 |  | Network & cybersecurity infrastructure | 25d | 2026-03-10 | 2026-04-13 | A1300 | 0d |  | Smart-Systems Integration Team [200 h]; Smart-Systems Hardware (sensors, servers, network gear) [0.2 LS] | 4,625,000 |
|  | 8 | **Interior Finishing & Medical Fit-out** |  | 2026-03-10 | 2026-07-30 |  |  |  |  |  |
|  | 1 | **Interior Finishes (flooring, walls, ceilings)** |  | 2026-03-10 | 2026-05-18 |  |  |  |  |  |
| A1370 |  | Interior finishes | 50d | 2026-03-10 | 2026-05-18 | A1290, A1300, A1310, A1320, A1280 | 20d | 0d | Finishing Crew [400 h] | 225,000 |

| ID | WBS | Activity | Duration | Start | Finish | Predecessors | Total float | Free float | Resources | Cost |
| --- | --- | --- | --- | --- | --- | --- | --- | --- | --- | --- |
|  | 2 | **Medical Equipment Installation** |  | 2026-05-19 | 2026-07-01 |  |  |  |  |  |
| A1380 |  | Medical equipment installation | 30d | 2026-05-19 | 2026-07-01 | A1370, A1130 | 20d | 0d | MEP Installation Crew [240 h]; Medical Equipment [1 LS] | 33,945,000 |
|  | 3 | **Furniture & Fixtures** |  | 2026-07-02 | 2026-07-30 |  |  |  |  |  |
| A1390 |  | Furniture & fixtures procurement/install | 20d | 2026-07-02 | 2026-07-30 | A1380 | 20d | 10d | Project Admin/Support [160 h]; Furniture & Fixtures [1 LS] | 5,018,000 |
|  | 9 | **Commissioning & Testing** |  | 2026-03-10 | 2026-08-13 |  |  |  |  |  |
|  | 1 | **MEP Systems Testing** |  | 2026-03-10 | 2026-03-30 |  |  |  |  |  |
| A1400 |  | MEP systems testing | 15d | 2026-03-10 | 2026-03-30 | A1290, A1300, A1310, A1320 | 95d | 0d | QA/QC Inspectors [120 h] | 27,000 |
|  | 2 | **Smart-Systems Testing & Integration Validation** |  | 2026-07-24 | 2026-08-13 |  |  |  |  |  |
| A1410 |  | Smart-systems testing & validation | 15d | 2026-07-24 | 2026-08-13 | A1330, A1340, A1350, A1360 | 0d |  | QA/QC Inspectors [120 h]; Smart-Systems Integration Team [120 h] | 102,000 |
|  | 3 | **Fire & Life Safety Testing** |  | 2026-03-31 | 2026-04-13 |  |  |  |  |  |
| A1420 |  | Fire & life safety testing | 10d | 2026-03-31 | 2026-04-13 | A1320, A1400 | 95d | 85d | QA/QC Inspectors [80 h] | 18,000 |
|  | 10 | **Accreditation & Handover** |  | 2026-08-14 | 2026-09-25 |  |  |  |  |  |
|  | 1 | **Regulatory Inspection** |  | 2026-08-14 | 2026-08-27 |  |  |  |  |  |
| A1430 |  | Regulatory inspection | 10d | 2026-08-14 | 2026-08-27 | A1390, A1400, A1410, A1420, A1180 | 10d |  | QA/QC Inspectors [80 h]; Project Manager [80 h] | 30,000 |
|  | 2 | **Staff Training** |  | 2026-08-14 | 2026-09-11 |  |  |  |  |  |
| A1440 |  | Staff training | 20d | 2026-08-14 | 2026-09-11 | A1410 | 0d |  | Project Admin/Support [160 h] | 18,000 |
|  | 3 | **Facility Handover & Closeout** |  | 2026-09-14 | 2026-09-25 |  |  |  |  |  |
| A1450 |  | Facility handover & closeout | 10d | 2026-09-14 | 2026-09-25 | A1430, A1440, A1010 FF, A1030 FF, A1050 FF | 0d |  | Project Manager [80 h] | 12,000 |
