# Hospital construction building

Schedule from Primavera P6, 2025-01-02 to 2026-10-09, data date 2025-10-31, costs in USD, A marks actual dates.

## Calendars

- Trades - 5 Day Workweek: Mon-Fri 08:00-12:00, 13:00-17:00; Sat-Sun off. Exceptions (off unless hours are given): 2025-01-20, 2025-02-17, 2025-05-26, 2025-06-19, 2025-07-04, 2025-09-01, 2025-10-13, 2025-11-11, 2025-11-27, 2025-12-25, 2026-01-01, 2026-01-19, 2026-02-16, 2026-05-25, 2026-06-19, 2026-07-03, 2026-09-07.

## Resources

| Resource | Group | Unit | Rate |
| --- | --- | --- | --- |
| Project Manager | labor |  | 150 |
| Project Admin/Support | labor |  | 112.5 |
| Architect Team | labor |  | 437.5 |
| Structural Engineer Team | labor |  | 375 |
| Excavation Equipment | equipment |  | 225 |
| Structural Construction Crew | labor |  | 1000 |
| Concrete Pumping Equipment | equipment |  | 187.5 |
| Structural Materials (concrete, rebar, steel) | material | LS | 95000000 |
| MEP Installation Crew | labor |  | 812.5 |
| Tower Crane | equipment |  | 312.5 |
| Tower Crane | equipment |  | 312.5 |
| Structural Construction Crew | labor |  | 1000 |
| Tower Crane | equipment |  | 312.5 |
| Structural Construction Crew | labor |  | 1000 |
| Tower Crane | equipment |  | 312.5 |
| Structural Construction Crew | labor |  | 1000 |
| Finishing Crew | labor |  | 562.5 |
| Finishing Crew | labor |  | 562.5 |
| MEP Materials & Fixtures | material | LS | 60000000 |
| MEP Installation Crew | labor |  | 812.5 |
| MEP Installation Crew | labor |  | 812.5 |
| MEP Installation Crew | labor |  | 812.5 |
| MEP Installation Crew | labor |  | 812.5 |
| Smart-Systems Hardware (sensors, servers, network gear) | material | LS | 22500000 |
| Smart-Systems Integration Team | labor |  | 625 |
| Smart-Systems Integration Team | labor |  | 625 |
| Smart-Systems Integration Team | labor |  | 625 |
| Finishing Crew | labor |  | 562.5 |
| Medical Equipment | material | LS | 33750000 |
| Furniture & Fixtures | material | LS | 5000000 |
| QA/QC Inspectors | labor |  | 225 |

## Schedule

| ID | WBS | Activity | Type | Duration | Start | Finish | Predecessors | Complete | Remaining | Planned start | Planned finish | Total float | Resources | Cost | Actual cost | WF |
| --- | --- | --- | --- | --- | --- | --- | --- | --- | --- | --- | --- | --- | --- | --- | --- | --- |
|  | 1 | **Project Management** |  |  | 2025-01-02 | 2026-10-09 |  |  |  |  |  |  |  |  |  |  |
|  | 1 | **Planning & Scheduling** |  |  | 2025-01-02 | 2026-10-09 |  |  |  |  |  |  |  |  |  |  |
| A0999 |  | Project Kickoff / Charter Approved | milestone | 0d | 2025-01-02 A | 2025-01-02 A |  | 100% |  |  |  |  |  |  |  | 0 |
| A1000 |  | Develop schedule baseline |  | 5d | 2025-01-02 A | 2025-01-08 A | A0999 SS | 100% |  |  |  |  | Project Manager [40 h] | 6,000 | 6,000 | 0.00270101152881754 |
| A1010 |  | Ongoing schedule updates | level of effort | 435d | 2025-01-02 A | 2026-10-09 | A1000 SS | 48% | 236d | 2025-01-02 | 2026-09-25 | 0d | Project Manager [3480 h] | 522,000 | 238,800 | 0.234988003007126 |
|  | 2 | **Cost Control & Reporting** |  |  | 2025-01-02 | 2026-10-09 |  |  |  |  |  |  |  |  |  |  |
| A1020 |  | Develop cost baseline |  | 5d | 2025-01-02 A | 2025-01-08 A | A1000 SS | 100% |  |  |  |  | Project Manager [40 h] | 6,000 | 6,000 | 0.00270101152881754 |
| A1025 |  | Cost Baseline Variance Review & Sponsor Decision | milestone | 0d | 2025-01-08 A | 2025-01-08 A | A1020 FF | 100% |  |  |  |  |  |  |  | 0 |
| A1030 |  | Ongoing cost control & reporting | level of effort | 430d | 2025-01-08 A | 2026-10-09 | A1020, A1025 | 47% | 236d | 2025-01-09 | 2026-09-25 | 0d | Project Manager [3440 h] | 516,000 | 232,800 | 0.232286991478309 |
|  | 3 | **Risk Management** |  |  | 2025-01-02 | 2026-10-09 |  |  |  |  |  |  |  |  |  |  |
| A1040 |  | Develop risk register |  | 3d | 2025-01-02 A | 2025-01-06 A | A1000 SS | 100% |  |  |  |  | Project Manager [24 h] | 3,600 | 3,600 | 0.00162060691729053 |
| A1050 |  | Ongoing risk monitoring | level of effort | 432d | 2025-01-06 A | 2026-10-09 | A1040 | 48% | 236d | 2025-01-07 | 2026-09-25 | 0d | Project Manager [3456 h] | 518,400 | 235,200 | 0.233367396089836 |
|  | 4 | **Contract Administration** |  |  | 2025-01-02 | 2025-01-23 |  |  |  |  |  |  |  |  |  |  |
| A1060 |  | Draft contract templates |  | 5d | 2025-01-02 A | 2025-01-08 A | A1000 SS | 100% |  |  |  |  | Project Admin/Support [40 h] | 4,500 | 4,500 | 0.00202575864661316 |
| A1070 |  | Contract negotiation & award |  | 10d | 2025-01-09 A | 2025-01-23 A | A1060 | 100% |  |  |  |  | Project Manager [80 h]; Project Admin/Support [80 h] | 21,000 | 21,000 | 0.0094535403508614 |
|  | 2 | **Design** |  |  | 2025-01-09 | 2025-05-16 |  |  |  |  |  |  |  |  |  |  |
|  | 1 | **Architectural Design** |  |  | 2025-01-09 | 2025-04-25 |  |  |  |  |  |  |  |  |  |  |
|  | 1 | **Conceptual Design** |  |  | 2025-01-09 | 2025-02-06 |  |  |  |  |  |  |  |  |  |  |
| A1080 |  | Conceptual design |  | 20d | 2025-01-09 A | 2025-02-06 A | A1000 | 100% |  |  |  |  | Architect Team [160 h] | 70,000 | 70,000 | 0.031511801169538 |
|  | 2 | **Schematic Design** |  |  | 2025-02-07 | 2025-03-14 |  |  |  |  |  |  |  |  |  |  |
| A1090 |  | Schematic design |  | 25d | 2025-02-07 A | 2025-03-14 A | A1080 | 100% |  |  |  |  | Architect Team [200 h] | 87,500 | 87,500 | 0.0393897514619225 |
|  | 3 | **Detailed Design** |  |  | 2025-03-17 | 2025-04-25 |  |  |  |  |  |  |  |  |  |  |
| A1100 |  | Detailed design |  | 30d | 2025-03-17 A | 2025-04-25 A | A1090 | 100% |  |  |  |  | Architect Team [240 h] | 105,000 | 105,000 | 0.047267701754307 |
| A1105 |  | Design Complete (Detailed Design Approved) | milestone | 0d | 2025-04-25 A | 2025-04-25 A | A1100 FF | 100% |  |  |  |  |  |  |  | 0 |

| ID | WBS | Activity | Type | Duration | Start | Finish | Predecessors | Complete | Resources | Cost | Actual cost | WF |
| --- | --- | --- | --- | --- | --- | --- | --- | --- | --- | --- | --- | --- |
|  | 2 | **Structural Design** |  |  | 2025-03-17 | 2025-04-18 |  |  |  |  |  |  |
| A1110 |  | Structural design |  | 25d | 2025-03-17 A | 2025-04-18 A | A1090 | 100% | Structural Engineer Team [200 h] | 75,000 | 75,000 | 0.0337626441102193 |
|  | 3 | **MEP Design** |  |  | 2025-03-17 | 2025-04-18 |  |  |  |  |  |  |
| A1120 |  | MEP design |  | 25d | 2025-03-17 A | 2025-04-18 A | A1090 | 100% | Structural Engineer Team [200 h] | 75,000 | 75,000 | 0.0337626441102193 |
|  | 4 | **Medical Equipment Planning** |  |  | 2025-04-28 | 2025-05-16 |  |  |  |  |  |  |
| A1130 |  | Medical equipment planning |  | 15d | 2025-04-28 A | 2025-05-16 A | A1100, A1105 | 100% | Structural Engineer Team [120 h] | 45,000 | 45,000 | 0.0202575864661316 |
|  | 3 | **Permits & Regulatory Approval** |  |  | 2025-02-07 | 2025-06-24 |  |  |  |  |  |  |
|  | 1 | **Certificate of Need** |  |  | 2025-02-07 | 2025-04-04 |  |  |  |  |  |  |
| A1140 |  | Prepare Certificate of Need application |  | 10d | 2025-02-07 A | 2025-02-21 A | A1080 | 100% | Project Admin/Support [80 h] | 9,000 | 9,000 | 0.00405151729322631 |
| A1150 |  | Certificate of Need approval (wait) |  | 30d | 2025-02-24 A | 2025-04-04 A | A1140 | 100% | Project Admin/Support [240 h] | 27,000 | 27,000 | 0.0121545518796789 |
|  | 2 | **Building Permits** |  |  | 2025-04-28 | 2025-06-24 |  |  |  |  |  |  |
| A1160 |  | Submit building permit application |  | 10d | 2025-04-28 A | 2025-05-09 A | A1100, A1105 | 100% | Project Admin/Support [80 h] | 9,000 | 9,000 | 0.00405151729322631 |
| A1170 |  | Building permit approval (wait) |  | 30d | 2025-05-12 A | 2025-06-24 A | A1160 | 100% | Project Admin/Support [240 h] | 27,000 | 27,000 | 0.0121545518796789 |
| A1175 |  | Notice to Proceed — Construction Authorized | milestone | 0d | 2025-06-24 A | 2025-06-24 A | A1170 FF | 100% |  |  |  | 0 |
|  | 3 | **Healthcare Facility Licensing** |  |  | 2025-04-07 | 2025-04-25 |  |  |  |  |  |  |
| A1180 |  | Healthcare facility licensing application |  | 15d | 2025-04-07 A | 2025-04-25 A | A1150 | 100% | Project Admin/Support [120 h] | 13,500 | 13,500 | 0.00607727593983947 |
|  | 4 | **Site Preparation & Civil Works** |  |  | 2025-06-25 | 2025-08-20 |  |  |  |  |  |  |
|  | 1 | **Site Clearing & Grading** |  |  | 2025-06-25 | 2025-07-16 |  |  |  |  |  |  |
| A1190 |  | Site clearing & grading |  | 15d | 2025-06-25 A | 2025-07-16 A | A1170, A1070, A1175 | 100% | Excavation Equipment [120 h]; Structural Construction Crew [120 h] | 147,000 | 147,000 | 0.0661747824560298 |
|  | 2 | **Foundation Work** |  |  | 2025-07-17 | 2025-08-20 |  |  |  |  |  |  |
| A1200 |  | Foundation excavation |  | 10d | 2025-07-17 A | 2025-07-30 A | A1190 | 100% | Excavation Equipment [80 h] | 18,000 | 18,000 | 0.00810303458645263 |
| A1210 |  | Foundation concrete pour |  | 15d | 2025-07-31 A | 2025-08-20 A | A1200 | 100% | Concrete Pumping Equipment [120 h]; Structural Construction Crew [120 h]; Structural Materials (concrete, rebar, steel) [0.06 LS] | 5,956,500 | 5,956,500 | 2.68142919523362 |
| A1215 |  | Foundation Complete | milestone | 0d | 2025-08-20 A | 2025-08-20 A | A1210 FF | 100% |  |  |  | 0 |
|  | 3 | **Utilities Infrastructure (water, power, sewage)** |  |  | 2025-07-24 | 2025-08-20 |  |  |  |  |  |  |
| A1220 |  | Utilities infrastructure installation |  | 20d | 2025-07-24 A | 2025-08-20 A | A1200 SS+5d | 100% | MEP Installation Crew [160 h] | 130,000 | 130,000 | 0.0585219164577134 |

| ID | WBS | Activity | Type | Duration | Start | Finish | Predecessors | Complete | Remaining | Planned start | Planned finish | Total float | Free float | Resources | Cost | Actual cost | WF |
| --- | --- | --- | --- | --- | --- | --- | --- | --- | --- | --- | --- | --- | --- | --- | --- | --- | --- |
|  | 5 | **Structural Construction** |  |  | 2025-08-21 | 2026-01-15 |  |  |  |  |  |  |  |  |  |  |  |
|  | 1 | **Superstructure (per wing: ED, ICU, Surgical, Inpatient floors)** |  |  | 2025-08-21 | 2025-12-02 |  |  |  |  |  |  |  |  |  |  |  |
| A1230 |  | Superstructure – ED wing |  | 40d | 2025-08-21 A | 2025-11-05 | A1210, A1110, A1215 | 90% | 4d | 2025-08-21 | 2025-10-17 | 17d |  | Tower Crane [320 h]; Structural Construction Crew [320 h]; Structural Materials (concrete, rebar, steel) [0.16 LS] | 15,933,500 | 14,340,150 | 7.17276119906905 |
| A1240 |  | Superstructure – ICU wing |  | 40d | 2025-08-21 A | 2025-11-05 | A1210, A1110, A1215 | 90% | 4d | 2025-08-21 | 2025-10-17 | 17d |  | Structural Materials (concrete, rebar, steel) [0.16 LS]; Tower Crane [320 h]; Structural Construction Crew [320 h] | 15,933,500 | 15,933,500 | 7.02870725086545 |
| A1250 |  | Superstructure – Surgical wing |  | 40d | 2025-08-21 A | 2025-11-05 | A1210, A1110, A1215 | 90% | 4d | 2025-08-21 | 2025-10-17 | 17d |  | Structural Materials (concrete, rebar, steel) [0.16 LS]; Tower Crane [320 h]; Structural Construction Crew [320 h] | 15,933,500 | 15,933,500 | 7.02870725086545 |
| A1260 |  | Superstructure – Inpatient floors |  | 60d | 2025-08-21 A | 2025-12-02 | A1210, A1110, A1215 | 65% | 21d | 2025-08-21 | 2025-11-17 | 0d |  | Structural Materials (concrete, rebar, steel) [0.24 LS]; Tower Crane [480 h]; Structural Construction Crew [480 h] | 23,895,500 | 15,532,075 | 10.5409225755045 |
| A1265 |  | Structural Topping Out | milestone | 0d | 2025-12-02 | 2025-12-02 | A1230 FF, A1240 FF, A1250 FF, A1260 FF |  |  |  |  | 0d |  |  |  |  | 0 |
|  | 2 | **Building Envelope (facade, roofing)** |  |  | 2025-12-03 | 2026-01-15 |  |  |  |  |  |  |  |  |  |  |  |
| A1270 |  | Building envelope – facade |  | 30d | 2025-12-03 | 2026-01-15 | A1260, A1230, A1240, A1250, A1265 |  |  |  |  | 0d |  | Structural Materials (concrete, rebar, steel) [0.12 LS]; Finishing Crew [240 h] | 11,763,000 |  | 5.29533310224679 |
| A1280 |  | Building envelope – roofing |  | 20d | 2025-12-03 | 2025-12-31 | A1260, A1230, A1240, A1250, A1265 |  |  |  |  | 10d |  | Structural Materials (concrete, rebar, steel) [0.08 LS]; Finishing Crew [160 h] | 7,842,000 |  | 3.53022206816453 |
| A1285 |  | Building Envelope / Dry-In Complete | milestone | 0d | 2026-01-15 | 2026-01-15 | A1270 FF, A1280 FF |  |  |  |  | 0d |  |  |  |  | 0 |
|  | 6 | **MEP Installation** |  |  | 2026-01-16 | 2026-03-23 |  |  |  |  |  |  |  |  |  |  |  |
|  | 1 | **HVAC Systems** |  |  | 2026-01-16 | 2026-03-23 |  |  |  |  |  |  |  |  |  |  |  |
| A1290 |  | HVAC installation |  | 45d | 2026-01-16 | 2026-03-23 | A1270, A1120, A1220, A1285 |  |  |  |  | 20d | 0d | MEP Materials & Fixtures [0.28 LS]; MEP Installation Crew [360 h] | 17,170,500 |  | 7.7296197425936 |
|  | 2 | **Electrical Systems** |  |  | 2026-01-16 | 2026-03-23 |  |  |  |  |  |  |  |  |  |  |  |
| A1300 |  | Electrical installation |  | 45d | 2026-01-16 | 2026-03-23 | A1270, A1120, A1220, A1285 |  |  |  |  | 0d |  | MEP Materials & Fixtures [0.28 LS]; MEP Installation Crew [360 h] | 17,170,500 |  | 7.7296197425936 |
|  | 3 | **Plumbing & Medical Gas Systems** |  |  | 2026-01-16 | 2026-03-16 |  |  |  |  |  |  |  |  |  |  |  |
| A1310 |  | Plumbing & medical gas systems |  | 40d | 2026-01-16 | 2026-03-16 | A1270, A1120, A1285 |  |  |  |  | 25d | 5d | MEP Materials & Fixtures [0.25 LS]; MEP Installation Crew [320 h] | 15,260,000 |  | 6.86957265495928 |
|  | 4 | **Fire Protection Systems** |  |  | 2026-01-16 | 2026-03-23 |  |  |  |  |  |  |  |  |  |  |  |
| A1320 |  | Fire protection systems |  | 30d | 2026-01-16 | 2026-03-02 | A1270, A1120, A1285 |  |  |  |  | 35d | 15d | MEP Materials & Fixtures [0.19 LS]; MEP Installation Crew [240 h] | 11,445,000 |  | 5.15217949121946 |
| A1325 |  | MEP Rough-In Complete | milestone | 0d | 2026-03-23 | 2026-03-23 | A1290, A1300, A1310, A1320 |  |  |  |  | 20d | 0d |  |  |  | 0 |
|  | 7 | **Smart-Systems Integration** |  |  | 2026-03-24 | 2026-08-06 |  |  |  |  |  |  |  |  |  |  |  |
|  | 1 | **IoT Patient Monitoring Infrastructure** |  |  | 2026-04-28 | 2026-06-09 |  |  |  |  |  |  |  |  |  |  |  |
| A1330 |  | IoT patient monitoring installation |  | 30d | 2026-04-28 | 2026-06-09 | A1360 |  |  |  |  | 0d |  | Smart-Systems Hardware (sensors, servers, network gear) [0.24 LS]; Smart-Systems Integration Team [240 h] | 5,550,000 |  | 2.49843566415623 |

| ID | WBS | Activity | Type | Duration | Start | Finish | Predecessors | Total float | Free float | Resources | Cost | WF |
| --- | --- | --- | --- | --- | --- | --- | --- | --- | --- | --- | --- | --- |
|  | 2 | **Building Management System (BMS)** |  |  | 2026-04-28 | 2026-06-09 |  |  |  |  |  |  |
| A1340 |  | BMS installation |  | 30d | 2026-04-28 | 2026-06-09 | A1360 | 40d |  | Smart-Systems Hardware (sensors, servers, network gear) [0.24 LS]; Smart-Systems Integration Team [240 h] | 5,550,000 | 2.49843566415623 |
|  | 3 | **EMR System Integration** |  |  | 2026-06-10 | 2026-08-06 |  |  |  |  |  |  |
| A1350 |  | EMR system integration |  | 40d | 2026-06-10 | 2026-08-06 | A1330, A1360 | 0d |  | Smart-Systems Integration Team [320 h]; Smart-Systems Hardware (sensors, servers, network gear) [0.32 LS] | 7,400,000 | 3.3312475522083 |
|  | 4 | **Network & Cybersecurity Infrastructure** |  |  | 2026-03-24 | 2026-08-06 |  |  |  |  |  |  |
| A1360 |  | Network & cybersecurity infrastructure |  | 25d | 2026-03-24 | 2026-04-27 | A1300 | 0d |  | Smart-Systems Integration Team [200 h]; Smart-Systems Hardware (sensors, servers, network gear) [0.2 LS] | 4,625,000 | 2.08202972013019 |
| A1365 |  | Smart-Systems Integration Complete | milestone | 0d | 2026-08-06 | 2026-08-06 | A1330 FF, A1340 FF, A1350 FF, A1360 FF | 0d |  |  |  | 0 |
|  | 8 | **Interior Finishing & Medical Fit-out** |  |  | 2026-03-24 | 2026-08-13 |  |  |  |  |  |  |
|  | 1 | **Interior Finishes (flooring, walls, ceilings)** |  |  | 2026-03-24 | 2026-06-02 |  |  |  |  |  |  |
| A1370 |  | Interior finishes |  | 50d | 2026-03-24 | 2026-06-02 | A1290, A1300, A1310, A1320, A1280, A1285, A1325 | 20d | 0d | Finishing Crew [400 h] | 225,000 | 0.101287932330658 |
|  | 2 | **Medical Equipment Installation** |  |  | 2026-06-03 | 2026-07-16 |  |  |  |  |  |  |
| A1380 |  | Medical equipment installation |  | 30d | 2026-06-03 | 2026-07-16 | A1370, A1130 | 20d | 0d | MEP Installation Crew [240 h]; Medical Equipment [1 LS] | 33,945,000 | 15.2809727242852 |
|  | 3 | **Furniture & Fixtures** |  |  | 2026-07-17 | 2026-08-13 |  |  |  |  |  |  |
| A1390 |  | Furniture & fixtures procurement/install |  | 20d | 2026-07-17 | 2026-08-13 | A1380 | 20d | 10d | Project Admin/Support [160 h]; Furniture & Fixtures [1 LS] | 5,018,000 | 2.25894597526774 |
|  | 9 | **Commissioning & Testing** |  |  | 2026-03-24 | 2026-08-27 |  |  |  |  |  |  |
|  | 1 | **MEP Systems Testing** |  |  | 2026-03-24 | 2026-04-13 |  |  |  |  |  |  |
| A1400 |  | MEP systems testing |  | 15d | 2026-03-24 | 2026-04-13 | A1290, A1300, A1310, A1320, A1325 | 95d | 0d | QA/QC Inspectors [120 h] | 27,000 | 0.0121545518796789 |
|  | 2 | **Smart-Systems Testing & Integration Validation** |  |  | 2026-08-07 | 2026-08-27 |  |  |  |  |  |  |
| A1410 |  | Smart-systems testing & validation |  | 15d | 2026-08-07 | 2026-08-27 | A1330, A1340, A1350, A1360, A1365 | 0d |  | QA/QC Inspectors [120 h]; Smart-Systems Integration Team [120 h] | 102,000 | 0.0459171959898982 |
|  | 3 | **Fire & Life Safety Testing** |  |  | 2026-04-14 | 2026-08-27 |  |  |  |  |  |  |
| A1420 |  | Fire & life safety testing |  | 10d | 2026-04-14 | 2026-04-27 | A1320, A1400 | 95d | 85d | QA/QC Inspectors [80 h] | 18,000 | 0.00810303458645263 |
| A1425 |  | Substantial Completion | milestone | 0d | 2026-08-27 | 2026-08-27 | A1400 FF, A1410 FF, A1420 FF | 10d | 0d |  |  | 0 |
|  | 10 | **Accreditation & Handover** |  |  | 2026-08-28 | 2026-10-09 |  |  |  |  |  |  |
|  | 1 | **Regulatory Inspection** |  |  | 2026-08-28 | 2026-09-11 |  |  |  |  |  |  |
| A1430 |  | Regulatory inspection |  | 10d | 2026-08-28 | 2026-09-11 | A1390, A1400, A1410, A1420, A1180, A1425 | 10d |  | QA/QC Inspectors [80 h]; Project Manager [80 h] | 30,000 | 0.0135050576440877 |

| ID | WBS | Activity | Type | Duration | Start | Finish | Predecessors | Total float | Resources | Cost | WF |
| --- | --- | --- | --- | --- | --- | --- | --- | --- | --- | --- | --- |
|  | 2 | **Staff Training** |  |  | 2026-08-28 | 2026-09-25 |  |  |  |  |  |
| A1440 |  | Staff training |  | 20d | 2026-08-28 | 2026-09-25 | A1410 | 0d | Project Admin/Support [160 h] | 18,000 | 0.00810303458645263 |
|  | 3 | **Facility Handover & Closeout** |  |  | 2026-09-28 | 2026-10-09 |  |  |  |  |  |
| A1450 |  | Facility handover & closeout |  | 10d | 2026-09-28 | 2026-10-09 | A1430, A1440, A1010 FF, A1030 FF, A1050 FF | 0d | Project Manager [80 h] | 12,000 | 0.00540202305763508 |
| A1455 |  | Project Closeout / Facility Handover Complete | milestone | 0d | 2026-10-09 | 2026-10-09 | A1450 FF | 0d |  |  | 0 |
